# Proj 3 mpp

Schedule from MS Project, 2025-03-03 to 2026-06-17, costs in $, A marks actual dates.

## Calendars

- Standard: Mon-Fri 08:00-12:00, 13:00-17:00; Sat-Sun off. Exceptions (off unless hours are given): 2025-04-19 08:00-12:00, 13:00-17:00.

## Resources

| Resource | Rate |
| --- | --- |
| PM | 100 |
| Req Lead | 80 |
| Req eng 1 | 60 |
| Req eng 2 | 60 |
| Req eng 3 | 60 |
| Req eng 4 | 60 |
| Arch Lead | 90 |
| Dev Lead | 90 |
| Test Lead | 80 |
| Deploy Lead | 85 |
| Req eng 5 | 50 |
| Legal Team | 50 |
| Client |  |
| Req eng 7 | 50 |
| Req eng 6 | 50 |
| Req eng 8 |  |
| Legal |  |
| front-end-dev1 |  |
| front-end-dev2 |  |
| front-end-dev3 |  |
| front-end-dev4 |  |
| back-end-dev1 |  |
| back-end-dev2 |  |
| back-end-dev3 |  |
| back-end-dev4 |  |
| back-end-dev5 |  |
| Tester1 |  |
| Tester2 |  |
| Tester3 |  |
| Tester4 |  |
| Tester5 |  |
| Deploy-eng-4 |  |
| Deploy-eng-1 |  |
| Deploy-eng-2 |  |
| Arch Eng 1 | 60 |
| Arch Eng 2 | 60 |
| Arch Eng 3 | 60 |
| Arch Eng 4 | 60 |
| Arch Eng 5 | 60 |
| Arch Eng 6 | 60 |
| Arch Eng 7 | 60 |
| Arch Lead 2 | 90 |
| Arch Lead 1 |  |
| Solutions Arch 1 |  |
| Security Arch 1 |  |
| Solutions Arch 2 |  |
| A |  |
| Arch Eng |  |

## Schedule

| ID | WBS | Task | Duration | Start | Finish | Predecessors | Complete | Remaining | Total slack | Free slack | Resources | Work | Actual work | Cost | Actual cost |
| --- | --- | --- | --- | --- | --- | --- | --- | --- | --- | --- | --- | --- | --- | --- | --- |
| 1 | 1 | **Project Start** | 339d | 2025-03-03 A | 2026-06-17 |  | 10% | 304.72d | 0d |  |  | 15071.2h | 1776h | 459,800 | 103,080 |
| 2 | 1.1 | SOW Signed | 1d | 2025-03-03 | 2025-03-03 |  |  |  | 338d | 0d |  |  |  |  |  |
| 3 | 1.2 | PM Activities | 79d | 2025-03-03 | 2025-06-18 |  |  |  | 260d | 0d | PM | 632h |  | 63,200 |  |
| 4 | 1.3 | **Requirements[Anushka]** | 173d | 2025-03-03 A | 2025-10-28 |  | 99% | 2.22d | 166d | 0d |  | 1792h | 1776h | 104,040 | 103,080 |
| 5 | 1.3.1 | **Stakeholder Template** | 22d | 2025-06-19 A | 2025-07-18 A |  | 100% |  |  |  |  | 296h | 296h | 18,800 | 18,800 |
| 6 | 1.3.1.1 | Identify Stakeholders | 5d | 2025-06-19 A | 2025-06-25 A | 2, 3 | 100% |  |  |  | Req eng 1 | 40h | 40h | 2,400 | 2,400 |
| 7 | 1.3.1.2 | Conduct Stakeholder interviews | 5d | 2025-06-26 A | 2025-07-02 A | 6, 2 | 100% |  |  |  | Req eng 1 | 40h | 40h | 2,400 | 2,400 |
| 8 | 1.3.1.3 | Identify and document Stakeholder Objectives | 5d | 2025-07-03 A | 2025-07-09 A | 7 | 100% |  |  |  | Req eng 2 | 40h | 40h | 2,400 | 2,400 |
| 9 | 1.3.1.4 | Create draft Stakeholder Template | 5d | 2025-06-26 A | 2025-07-02 A | 6 | 100% |  |  |  | Req eng 2 | 40h | 40h | 2,400 | 2,400 |
| 10 | 1.3.1.5 | Review draft Stakeholder Template with Leads | 2d | 2025-07-10 A | 2025-07-11 A | 7, 8 | 100% |  |  |  | Arch Lead; Deploy Lead; Dev Lead; Req Lead; Test Lead | 80h | 80h | 6,800 | 6,800 |
| 11 | 1.3.1.6 | Create final Stakeholder Template | 3d | 2025-07-14 A | 2025-07-16 A | 10 | 100% |  |  |  | Req eng 1 | 24h | 24h | 1,440 | 1,440 |
| 12 | 1.3.1.7 | Review with Customer and Signoff | 2d | 2025-07-17 A | 2025-07-18 A | 11 | 100% |  |  |  | Req eng 2; Client | 32h | 32h | 960 | 960 |
| 13 | 1.3.2 | **Req Specification doc** | 173d | 2025-03-03 A | 2025-10-28 |  | 98% | 2.68d | 166d | 0d |  | 1496h | 1480h | 85,240 | 84,280 |
| 14 | 1.3.2.1 | **Technical Req** | 173d | 2025-03-03 A | 2025-10-28 |  | 98% | 2.68d | 166d | 0d |  | 1496h | 1480h | 85,240 | 84,280 |
| 15 | 1.3.2.1.1 | **Front end** | 146d | 2025-03-03 A | 2025-09-19 |  | 98% | 3.17d | 193d | 0d |  | 1088h | 1072h | 60,560 | 59,600 |
| 16 | 1.3.2.1.1.1 | **User Authentication** | 8d | 2025-07-10 A | 2025-07-21 A |  | 100% |  |  |  |  | 128h | 128h | 8,880 | 8,880 |
| 17 | 1.3.2.1.1.1.1 | Create Registration Page | 3d | 2025-07-10 A | 2025-07-14 A | 8 | 100% |  |  |  | Req eng 3 | 24h | 24h | 1,440 | 1,440 |
| 18 | 1.3.2.1.1.1.2 | Create Login Page | 3d | 2025-07-15 A | 2025-07-17 A | 17 | 100% |  |  |  | Req eng 3 | 24h | 24h | 1,440 | 1,440 |
| 19 | 1.3.2.1.1.1.3 | Review with leads | 2d | 2025-07-17 A | 2025-07-18 A | 11 | 100% |  |  |  | Arch Lead; Dev Lead; Deploy Lead; Req Lead | 64h | 64h | 5,520 | 5,520 |
| 20 | 1.3.2.1.1.1.4 | Review with client | 1d | 2025-07-21 A | 2025-07-21 A | 19 | 100% |  |  |  | Req eng 3; Client | 16h | 16h | 480 | 480 |
| 21 | 1.3.2.1.1.2 | **User Profiles** | 117d | 2025-03-03 A | 2025-08-11 |  | 90% | 11.14d | 222d | 0d |  | 248h | 232h | 15,920 | 14,960 |
| 22 | 1.3.2.1.1.2.1 | **Buyers** | 2d | 2025-03-03 | 2025-03-04 |  |  |  | 337d | 0d |  | 16h |  | 960 |  |
| 23 | 1.3.2.1.1.2.1.1 | Create Profiles | 2d | 2025-03-03 | 2025-03-04 |  |  |  | 337d | 0d | Req eng 1 | 16h |  | 960 |  |
| 24 | 1.3.2.1.1.2.2 | Create profile | 2d | 2025-07-22 A | 2025-07-23 A | 20 | 100% |  |  |  | Req eng 3 | 16h | 16h | 960 | 960 |
| 25 | 1.3.2.1.1.2.3 | Track bid | 2d | 2025-07-24 A | 2025-07-25 A | 24 | 100% |  |  |  | Req eng 3 | 16h | 16h | 960 | 960 |

| ID | WBS | Task | Duration | Start | Finish | Predecessors | Complete | Resources | Work | Actual work | Cost | Actual cost |
| --- | --- | --- | --- | --- | --- | --- | --- | --- | --- | --- | --- | --- |
| 26 | 1.3.2.1.1.2.4 | **Sellers** | 13d | 2025-07-24 A | 2025-08-11 A |  | 100% |  | 200h | 200h | 13,040 | 13,040 |
| 27 | 1.3.2.1.1.2.4.1 | List Medical Supplies for auction | 3d | 2025-07-24 A | 2025-07-28 A | 24 | 100% | Req eng 1 | 24h | 24h | 1,440 | 1,440 |
| 28 | 1.3.2.1.1.2.4.2 | Upload Pictures & set starting bids | 4d | 2025-07-29 A | 2025-08-01 A | 27 | 100% | Req eng 1 | 32h | 32h | 1,920 | 1,920 |
| 29 | 1.3.2.1.1.2.4.3 | Define Auction Duration | 4d | 2025-08-04 A | 2025-08-07 A | 28 | 100% | Req eng 1 | 32h | 32h | 1,920 | 1,920 |
| 30 | 1.3.2.1.1.2.4.4 | Review User Auth and Profile with Leads | 2d | 2025-07-24 A | 2025-07-25 A | 18, 24, 17 | 100% | Arch Lead; Deploy Lead; Dev Lead; Req Lead; Test Lead | 80h | 80h | 6,800 | 6,800 |
| 31 | 1.3.2.1.1.2.4.5 | Review / Approval from Customer on Auth and Profile | 2d | 2025-08-08 A | 2025-08-11 A | 30, 27, 28, 29 | 100% | Req eng 1; Client | 32h | 32h | 960 | 960 |
| 32 | 1.3.2.1.1.3 | **Auction Listing & Management** | 10d | 2025-08-08 A | 2025-08-21 A |  | 100% |  | 80h | 80h | 4,800 | 4,800 |
| 33 | 1.3.2.1.1.3.1 | Create auction listings with detailed medical supply descriptions, images, and specifications | 2d | 2025-08-08 A | 2025-08-11 A | 29, 27, 28 | 100% | Req eng 4 | 16h | 16h | 960 | 960 |
| 34 | 1.3.2.1.1.3.2 | Set minimum bid amounts and reserve prices | 2d | 2025-08-12 A | 2025-08-13 A | 33 | 100% | Req eng 4 | 16h | 16h | 960 | 960 |
| 35 | 1.3.2.1.1.3.3 | Automated auction closing upon expiry | 2d | 2025-08-14 A | 2025-08-15 A | 34 | 100% | Req eng 4 | 16h | 16h | 960 | 960 |
| 36 | 1.3.2.1.1.3.4 | Live bid updates, email, and push notifications | 2d | 2025-08-18 A | 2025-08-19 A | 35 | 100% | Req eng 4 | 16h | 16h | 960 | 960 |
| 37 | 1.3.2.1.1.3.5 | Real-Time Bidding System | 2d | 2025-08-20 A | 2025-08-21 A | 36 | 100% | Req eng 4 | 16h | 16h | 960 | 960 |
| 38 | 1.3.2.1.1.4 | Compliance Verification | 2d | 2025-08-22 A | 2025-08-25 A | 37 | 100% | Req eng 4 | 16h | 16h | 960 | 960 |
| 39 | 1.3.2.1.1.5 | **Payment Processing** | 3d | 2025-08-26 A | 2025-08-28 A |  | 100% |  | 24h | 24h | 1,200 | 1,200 |
| 40 | 1.3.2.1.1.5.1 | Secure payment gateway with multiple methods (Credit/Debit, Digital Wallets) | 2d | 2025-08-26 A | 2025-08-27 A | 38 | 100% | Req eng 6 | 16h | 16h | 800 | 800 |
| 41 | 1.3.2.1.1.5.2 | Secure escrow system for transaction protection | 1d | 2025-08-28 A | 2025-08-28 A | 40 | 100% | Req eng 6 | 8h | 8h | 400 | 400 |
| 42 | 1.3.2.1.1.6 | Transaction & Order History | 2d | 2025-08-29 A | 2025-09-01 A | 41 | 100% | Req eng 6 | 16h | 16h | 800 | 800 |
| 43 | 1.3.2.1.1.7 | Rating & Reviews | 2d | 2025-09-02 A | 2025-09-03 A | 42 | 100% | Req eng 6 | 16h | 16h | 800 | 800 |
| 44 | 1.3.2.1.1.8 | **Review Auction listing & Payment with Leads** | 2d | 2025-09-04 A | 2025-09-05 A | 40, 41, 42, 43 | 100% | Arch Lead; Deploy Lead; Dev Lead; Req Lead; Test Lead | 112h | 112h | 7,600 | 7,600 |
| 45 | 1.3.2.1.1.8.1 | Review / Approval of Auction listing & Payment with Customer | 2d | 2025-09-04 A | 2025-09-05 A |  | 100% | Req eng 6; Client | 32h | 32h | 800 | 800 |
| 46 | 1.3.2.1.1.9 | **Admin Dashboard** | 8d | 2025-09-04 A | 2025-09-15 A |  | 100% |  | 64h | 64h |  |  |
| 47 | 1.3.2.1.1.9.1 | Fraud detection and user verification features | 5d | 2025-09-04 A | 2025-09-10 A | 43 | 100% | Req eng 8 | 40h | 40h |  |  |
| 48 | 1.3.2.1.1.9.2 | Manage user accounts, auction listings, transaction repo | 3d | 2025-09-11 A | 2025-09-15 A | 47 | 100% | Req eng 8 | 24h | 24h |  |  |
| 49 | 1.3.2.1.1.10 | **Backend Req** | 31d | 2025-08-08 A | 2025-09-19 A |  | 100% |  | 384h | 384h | 19,600 | 19,600 |
| 50 | 1.3.2.1.1.10.1 | **Authentication & Authorization** | 31d | 2025-08-08 A | 2025-09-19 A |  | 100% |  | 384h | 384h | 19,600 | 19,600 |
| 51 | 1.3.2.1.1.10.1.1 | Secure user authentication | 2d | 2025-08-08 A | 2025-08-11 A | 27, 29 | 100% | Req eng 7 | 16h | 16h | 800 | 800 |
| 52 | 1.3.2.1.1.10.1.2 | Role-based access control (Admin, Buyer, Seller) | 2d | 2025-08-12 A | 2025-08-13 A | 51 | 100% | Req eng 7 | 16h | 16h | 800 | 800 |

| ID | WBS | Task | Duration | Start | Finish | Predecessors | Complete | Resources | Work | Actual work | Cost | Actual cost |
| --- | --- | --- | --- | --- | --- | --- | --- | --- | --- | --- | --- | --- |
| 53 | 1.3.2.1.1.10.1.3 | **Database Management** | 27d | 2025-08-14 A | 2025-09-19 A |  | 100% |  | 352h | 352h | 18,000 | 18,000 |
| 54 | 1.3.2.1.1.10.1.3.1 | Relational database to store user profiles, auction listings, bids, transactions, and reviews | 6d | 2025-08-14 A | 2025-08-21 A | 52 | 100% | Req eng 8 | 48h | 48h |  |  |
| 55 | 1.3.2.1.1.10.1.3.2 | Ensure data integrity and normalization | 4d | 2025-08-22 A | 2025-08-27 A | 54 | 100% | Req eng 8 | 32h | 32h |  |  |
| 56 | 1.3.2.1.1.10.1.3.3 | **Auction Management System** | 17d | 2025-08-28 A | 2025-09-19 A |  | 100% |  | 272h | 272h | 18,000 | 18,000 |
| 57 | 1.3.2.1.1.10.1.3.3.1 | CRUD operations for auction listings | 3d | 2025-08-28 A | 2025-09-01 A | 55 | 100% | Req eng 3 | 24h | 24h | 1,440 | 1,440 |
| 58 | 1.3.2.1.1.10.1.3.3.2 | Automated auction expiration and winner selection | 4d | 2025-09-02 A | 2025-09-05 A | 57 | 100% | Req eng 3 | 32h | 32h | 1,920 | 1,920 |
| 59 | 1.3.2.1.1.10.1.3.3.3 | Get signoff from Leads on the technical requirements | 2d | 2025-09-08 A | 2025-09-09 A | 58 | 100% | Arch Lead; Deploy Lead; Dev Lead; Req Lead; Test Lead | 80h | 80h | 6,800 | 6,800 |
| 60 | 1.3.2.1.1.10.1.3.3.4 | **Admin Panel Features** | 7d | 2025-09-10 A | 2025-09-18 A |  | 100% |  | 88h | 88h | 6,400 | 6,400 |
| 61 | 1.3.2.1.1.10.1.3.3.4.1 | Dashboard for monitoring user activity | 2d | 2025-09-10 A | 2025-09-11 A | 59 | 100% | Req eng 4 | 16h | 16h | 960 | 960 |
| 62 | 1.3.2.1.1.10.1.3.3.4.2 | Fraud detection and account suspension mechanisms | 3d | 2025-09-12 A | 2025-09-16 A | 61 | 100% | Req eng 4 | 24h | 24h | 1,440 | 1,440 |
| 63 | 1.3.2.1.1.10.1.3.3.4.3 | Review with leads | 2d | 2025-09-17 A | 2025-09-18 A | 62 | 100% | Arch Lead; Req Lead; Test Lead | 48h | 48h | 4,000 | 4,000 |
| 64 | 1.3.2.1.1.10.1.3.3.5 | Review technical Req doc with Client and get signoff | 3d | 2025-09-17 A | 2025-09-19 A | 62 | 100% | Client; Req eng 4 | 48h | 48h | 1,440 | 1,440 |
| 65 | 1.3.2.1.2 | **Wireframes** | 37d | 2025-09-08 A | 2025-10-28 A |  | 100% |  | 408h | 408h | 24,680 | 24,680 |
| 66 | 1.3.2.1.2.1 | Auction Listing Page | 3d | 2025-09-08 A | 2025-09-10 A | 45 | 100% | Req eng 2 | 24h | 24h | 1,440 | 1,440 |
| 67 | 1.3.2.1.2.2 | Auction Details Page | 3d | 2025-09-11 A | 2025-09-15 A | 66 | 100% | Req eng 3 | 24h | 24h | 1,440 | 1,440 |
| 68 | 1.3.2.1.2.3 | Auction Registration Page | 3d | 2025-09-16 A | 2025-09-18 A | 67, 31 | 100% | Req eng 5 | 24h | 24h | 1,200 | 1,200 |
| 69 | 1.3.2.1.2.4 | Bid Management Page | 3d | 2025-09-19 A | 2025-09-23 A | 68 | 100% | Req eng 1 | 24h | 24h | 1,440 | 1,440 |
| 70 | 1.3.2.1.2.5 | Supplier Verification page | 3d | 2025-09-24 A | 2025-09-26 A | 69 | 100% | Req eng 4 | 24h | 24h | 1,440 | 1,440 |
| 71 | 1.3.2.1.2.6 | Transaction & Order History Page | 3d | 2025-09-29 A | 2025-10-01 A | 70 | 100% | Req eng 6 | 24h | 24h | 1,200 | 1,200 |
| 72 | 1.3.2.1.2.7 | Notification & Alerts Page | 3d | 2025-10-02 A | 2025-10-06 A | 71 | 100% | Req eng 7 | 24h | 24h | 1,200 | 1,200 |
| 73 | 1.3.2.1.2.8 | Review Wireframes with Leads | 1d | 2025-10-07 A | 2025-10-07 A | 72 | 100% | Test Lead; Arch Lead; Deploy Lead; Dev Lead | 32h | 32h | 2,760 | 2,760 |
| 74 | 1.3.2.1.2.9 | Update Wireframes | 2d | 2025-10-08 A | 2025-10-09 A | 73 | 100% | Req eng 8 | 16h | 16h |  |  |
| 75 | 1.3.2.1.2.10 | Review Wireframes with client and get signoff | 1d | 2025-10-10 A | 2025-10-10 A | 74 | 100% | Req Lead; Client | 16h | 16h | 640 | 640 |
| 76 | 1.3.2.1.2.11 | **App Map** | 12d | 2025-10-13 A | 2025-10-28 A |  | 100% |  | 176h | 176h | 11,920 | 11,920 |
| 77 | 1.3.2.1.2.11.1 | Review exisiting dashboard applications | 2d | 2025-10-13 A | 2025-10-14 A | 75 | 100% | Req eng 3 | 16h | 16h | 960 | 960 |
| 78 | 1.3.2.1.2.11.2 | Identify User Roles and Navigation Paths | 2d | 2025-10-15 A | 2025-10-16 A | 77 | 100% | Req eng 3 | 16h | 16h | 960 | 960 |
| 79 | 1.3.2.1.2.11.3 | Document Integration Points | 2d | 2025-10-17 A | 2025-10-20 A | 78 | 100% | Req eng 6 | 16h | 16h | 800 | 800 |
| 80 | 1.3.2.1.2.11.4 | Create a Draft App Map | 2d | 2025-10-21 A | 2025-10-22 A | 79 | 100% | Req eng 6 | 16h | 16h | 800 | 800 |
| 81 | 1.3.2.1.2.11.5 | Review Draft App Map with leads | 2d | 2025-10-23 A | 2025-10-24 A | 80 | 100% | Arch Lead; Dev Lead; Deploy Lead; Req Lead; Test Lead | 80h | 80h | 6,800 | 6,800 |
| 82 | 1.3.2.1.2.11.6 | Update App Map and create final App Map | 2d | 2025-10-27 A | 2025-10-28 A | 81 | 100% | Req eng 6; Req eng 7 | 32h | 32h | 1,600 | 1,600 |

| ID | WBS | Task | Duration | Start | Finish | Predecessors | Total slack | Free slack | Resources | Work | Cost |
| --- | --- | --- | --- | --- | --- | --- | --- | --- | --- | --- | --- |
| 83 | 1.4 | **Architecture** | 32.5d | 2025-03-03 | 2025-04-16 |  | 226d | 0d |  | 1895.2h | 87,760 |
| 84 | 1.4.1 | **Reviewing Requirements and Planning Architecture** | 12.5d | 2025-03-03 | 2025-03-19 |  | 326.5d | 0d |  | 139.2h | 3,480 |
| 85 | 1.4.1.1 | Review Requirements and Prepare Architectural Plan | 3d | 2025-03-03 | 2025-03-05 |  | 326.5d | 0d | Req Lead; Arch Lead 2; Arch Lead 1 | 43.2h | 1,680 |
| 86 | 1.4.1.2 | Kick off meeting for Architecture | 2d | 2025-03-06 | 2025-03-07 | 85 | 326.5d | 0d | Arch Lead 1; Arch Lead 2 | 32h | 1,440 |
| 87 | 1.4.1.3 | Identify risk within architecture and create a mitigation plan | 2d | 2025-03-10 | 2025-03-11 | 86 | 326.5d | 0d | Arch Lead 1 | 16h |  |
| 88 | 1.4.1.4 | Review Risk and Mitigation plan with leads | 0.5d | 2025-03-12 | 2025-03-12 | 87 | 326.5d | 0d | Arch Lead 1; Arch Lead 2 | 8h | 360 |
| 89 | 1.4.1.5 | Finalize Architecture Plans & Sign-off | 5d | 2025-03-12 | 2025-03-19 | 88 | 326.5d | 0d | Arch Lead 1 | 40h |  |
| 90 | 1.4.2 | **General Architecture** | 14d | 2025-03-03 | 2025-03-20 |  | 325d | 0d |  | 184h | 9,840 |
| 91 | 1.4.2.1 | Discuss and Choose a tech stack | 4d | 2025-03-03 | 2025-03-06 |  | 325d | 0d | Arch Lead 2; Arch Eng 1 | 64h | 4,800 |
| 92 | 1.4.2.2 | Define Data Flows and Create Diagrams | 2d | 2025-03-07 | 2025-03-10 | 91 | 325d | 0d | Arch Eng 1; Arch Eng 2 | 32h | 1,920 |
| 93 | 1.4.2.3 | Review Diagrams with leads | 1d | 2025-03-11 | 2025-03-11 | 92 | 325d | 0d | Arch Lead 2; Arch Eng 1 | 16h | 1,200 |
| 94 | 1.4.2.4 | Incorporate Feedback from leads | 2d | 2025-03-12 | 2025-03-13 | 93 | 325d | 0d | Arch Eng 1; Arch Eng 2 | 32h | 1,920 |
| 95 | 1.4.2.5 | Review Architecture plan with customer and get sign off | 5d | 2025-03-14 | 2025-03-20 | 94 | 325d | 0d | Arch Lead 1 | 40h |  |
| 96 | 1.4.3 | **Bidding/Auction System Architecture** | 18.5d | 2025-03-03 | 2025-03-27 |  | 320.5d | 0d |  | 264h | 15,000 |
| 97 | 1.4.3.1 | Review performance requirements | 2d | 2025-03-03 | 2025-03-04 |  | 320.5d | 0d | Arch Eng 1; Arch Eng 2; Arch Eng 3 | 48h | 2,880 |
| 98 | 1.4.3.2 | Create sequence diagram for Bidding System | 1d | 2025-03-05 | 2025-03-05 | 97 | 320.5d | 0d | Arch Eng 1; Arch Eng 4; Arch Eng 5 | 24h | 1,440 |
| 99 | 1.4.3.3 | Review and Finalize Sequence Diagrams | 0.5d | 2025-03-06 | 2025-03-06 | 98 | 320.5d | 0d | Arch Lead 2; Arch Eng 3 | 8h | 600 |
| 100 | 1.4.3.4 | Define Data Structures and Event Flow | 2d | 2025-03-06 | 2025-03-10 | 99 | 320.5d | 0d | Arch Eng 5; Arch Eng 6 | 32h | 1,920 |
| 101 | 1.4.3.5 | Create Architecture for Data Structures and Event Flow | 5d | 2025-03-10 | 2025-03-17 | 100 | 320.5d | 0d | Arch Eng 7; Arch Lead 2 | 80h | 6,000 |
| 102 | 1.4.3.6 | Review DB & Event Flow with leads | 1d | 2025-03-17 | 2025-03-18 | 101 | 320.5d | 0d | Arch Eng 5; Arch Lead 2 | 16h | 1,200 |
| 103 | 1.4.3.7 | Incorporate Changes for DB & Event Flow Architecture | 2d | 2025-03-18 | 2025-03-20 | 102 | 320.5d | 0d | Arch Eng 5 | 16h | 960 |
| 104 | 1.4.3.8 | Get final approval and sign off | 5d | 2025-03-20 | 2025-03-27 | 103 | 320.5d | 0d | Arch Lead 1 | 40h |  |
| 105 | 1.4.4 | **Payment Processing Architecture** | 22.5d | 2025-03-03 | 2025-04-02 |  | 316.5d | 0d |  | 268h | 13,800 |
| 106 | 1.4.4.1 | Review performance and security requirements | 2d | 2025-03-03 | 2025-03-04 |  | 316.5d | 0d | Arch Eng 1; Arch Eng 2 | 32h | 1,920 |
| 107 | 1.4.4.2 | Create Payment Flow & Data Security | 5d | 2025-03-05 | 2025-03-11 | 106 | 316.5d | 0d | Arch Eng 1; Arch Eng 2 | 80h | 4,800 |
| 108 | 1.4.4.3 | Assess Risk in Payment System | 2d | 2025-03-12 | 2025-03-13 | 107 | 316.5d | 0d | Arch Lead 1; Security Arch 1 | 32h |  |
| 109 | 1.4.4.4 | Generate Framework for Logging and Auditing Transactions | 8d | 2025-03-14 | 2025-03-25 | 108 | 316.5d | 0d | Arch Eng 1 | 64h | 3,840 |
| 110 | 1.4.4.5 | Review Frameworks | 3d | 2025-03-26 | 2025-03-28 | 109 | 316.5d | 0d | Arch Eng 2 | 24h | 1,440 |
| 111 | 1.4.4.6 | Gather all Payment Processing and Security Documents | 2d | 2025-03-31 | 2025-04-01 | 110 | 316.5d | 0d | Arch Lead 1; Arch Lead 2 | 32h | 1,440 |
| 112 | 1.4.4.7 | Present to customer and sign-off (Payment and Security) | 0.5d | 2025-04-02 | 2025-04-02 | 111 | 316.5d | 0d | Arch Lead 2 | 4h | 360 |

Notes:
- 85: Review SOW, Requirements, schedule, resources, and all phases of architecture to develop a work plan
- 92: Set out how systems will interact in terms of data

| ID | WBS | Task | Duration | Start | Finish | Predecessors | Total slack | Free slack | Resources | Work | Cost |
| --- | --- | --- | --- | --- | --- | --- | --- | --- | --- | --- | --- |
| 113 | 1.4.5 | **Compliance Architecture** | 18.5d | 2025-03-03 | 2025-03-27 |  | 320.5d | 0d |  | 312h | 15,600 |
| 114 | 1.4.5.1 | Review requirements for regulatory requirments | 2d | 2025-03-03 | 2025-03-04 |  | 320.5d | 0d | Solutions Arch 1 | 16h |  |
| 115 | 1.4.5.2 | Compliance Handling & Data Storage Architecture | 5d | 2025-03-05 | 2025-03-11 | 114 | 320.5d | 0d | Arch Eng 4 | 40h | 2,400 |
| 116 | 1.4.5.3 | Set up External Compliance API's | 4d | 2025-03-12 | 2025-03-17 | 115 | 320.5d | 0d | Arch Eng 1 | 32h | 1,920 |
| 117 | 1.4.5.4 | Create Compliance Audit logging system | 4d | 2025-03-18 | 2025-03-21 | 116 | 320.5d | 0d | Arch Eng 6 | 32h | 1,920 |
| 118 | 1.4.5.5 | Review Compliance Architecture | 2d | 2025-03-24 | 2025-03-25 | 117 | 320.5d | 0d | Arch Eng 3 | 16h | 960 |
| 119 | 1.4.5.6 | Implement compliance changes | 1d | 2025-03-26 | 2025-03-26 | 118 | 320.5d | 0d | Arch Eng 1 | 8h | 480 |
| 120 | 1.4.5.7 | Get customer sign-off for compliance architecture layout | 0.5d | 2025-03-27 | 2025-03-27 | 119 | 320.5d | 0d | Arch Lead 2 | 4h | 360 |
| 121 | 1.4.5.8 | **Security Architecture** | 13.5d | 2025-03-03 | 2025-03-20 |  | 325.5d | 0d |  | 164h | 7,560 |
| 122 | 1.4.5.8.1 | Conduct an assessment of security risk | 2d | 2025-03-03 | 2025-03-04 |  | 325.5d | 0d | Arch Eng 1; Arch Eng 2 | 32h | 1,920 |
| 123 | 1.4.5.8.2 | Establish security controls and access management procedures | 3d | 2025-03-05 | 2025-03-07 | 122 | 325.5d | 0d | Arch Lead 1; Arch Eng 3 | 48h | 1,440 |
| 124 | 1.4.5.8.3 | Create Framework to monitor security risk and access logs | 3d | 2025-03-10 | 2025-03-12 | 123 | 325.5d | 0d | Arch Eng 1 | 24h | 1,440 |
| 125 | 1.4.5.8.4 | Create Incident Report and Notification System | 2d | 2025-03-13 | 2025-03-14 | 124 | 325.5d | 0d | Solutions Arch 1; Arch Eng 2 | 32h | 960 |
| 126 | 1.4.5.8.5 | Review Security Architecture - For Access and Loggin | 2d | 2025-03-17 | 2025-03-18 | 125 | 325.5d | 0d | Arch Eng 4 | 16h | 960 |
| 127 | 1.4.5.8.6 | Implement security changes | 1d | 2025-03-19 | 2025-03-19 | 126 | 325.5d | 0d | Arch Eng 1 | 8h | 480 |
| 128 | 1.4.5.8.7 | Get customer sign-off for Access Controls and Incident Reporting | 0.5d | 2025-03-20 | 2025-03-20 | 127 | 325.5d | 0d | Arch Lead 2 | 4h | 360 |
| 129 | 1.4.6 | **User Architecture** | 32.5d | 2025-03-03 | 2025-04-16 |  | 306.5d | 0d |  | 552h | 23,400 |
| 130 | 1.4.6.1 | Review requirements for buyers and vendors | 2d | 2025-03-03 | 2025-03-04 |  | 306.5d | 0d | Arch Eng 1; Arch Eng 2 | 32h | 1,920 |
| 131 | 1.4.6.2 | **Design User registration and authentication work flow** | 32.5d | 2025-03-03 | 2025-04-16 |  | 306.5d | 0d |  | 520h | 21,480 |
| 132 | 1.4.6.2.1 | **Vendors** | 17.5d | 2025-03-05 | 2025-03-28 |  | 306.5d | 0d |  | 220h | 6,240 |
| 133 | 1.4.6.2.1.1 | Generate framework to onboard and validate vendors | 5d | 2025-03-05 | 2025-03-11 | 130 | 306.5d | 0d | Solutions Arch 1; Arch Eng 2 | 80h | 2,400 |
| 134 | 1.4.6.2.1.2 | Asess and integrate existing vendor API's | 4d | 2025-03-12 | 2025-03-17 | 133 | 306.5d | 0d | Solutions Arch 2 | 32h |  |
| 135 | 1.4.6.2.1.3 | Architect Vendor listing system | 3d | 2025-03-18 | 2025-03-20 | 134 | 306.5d | 0d | Solutions Arch 1; Arch Eng 2 | 48h | 1,440 |
| 136 | 1.4.6.2.1.4 | Review Vendor and Inventory systems | 3d | 2025-03-21 | 2025-03-25 | 135 | 306.5d | 0d | Solutions Arch 2 | 24h |  |
| 137 | 1.4.6.2.1.5 | Implement change and get lead sign off | 2d | 2025-03-26 | 2025-03-27 | 136 | 306.5d | 0d | Arch Eng 1; Arch Lead 2 | 32h | 2,400 |
| 138 | 1.4.6.2.1.6 | Get customer sign-off for Vendor systems | 0.5d | 2025-03-28 | 2025-03-28 | 137 | 306.5d | 0d | Arch Lead 1 | 4h |  |

| ID | WBS | Task | Duration | Start | Finish | Predecessors | Total slack | Free slack | Resources | Work | Cost |
| --- | --- | --- | --- | --- | --- | --- | --- | --- | --- | --- | --- |
| 139 | 1.4.6.2.2 | **Buyers** | 32.5d | 2025-03-03 | 2025-04-16 |  | 306.5d | 0d |  | 300h | 15,240 |
| 140 | 1.4.6.2.2.1 | Generate framework to onboard and validate buyers | 4d | 2025-03-28 | 2025-04-03 | 138 | 306.5d | 0d | Arch Eng 1; Arch Eng 3 | 64h | 3,840 |
| 141 | 1.4.6.2.2.2 | Generate framework to verify buyers | 3d | 2025-04-03 | 2025-04-08 | 140 | 306.5d | 0d | Arch Eng 2; Arch Eng 4 | 48h | 2,880 |
| 142 | 1.4.6.2.2.3 | Architect buyers dashboard | 4d | 2025-04-08 | 2025-04-14 | 141 | 306.5d | 0d | Arch Eng 5 | 32h | 1,920 |
| 143 | 1.4.6.2.2.4 | Review buyer dashboard with leads | 2d | 2025-04-14 | 2025-04-16 | 142 | 306.5d | 0d | Arch Lead 1; Arch Eng 5 | 32h | 960 |
| 144 | 1.4.6.2.2.5 | Impliment changes and get customer sign off for buyer dashboard | 1.5d | 2025-03-03 | 2025-03-04 |  | 327d | 0d | Arch Eng 5; Arch Eng 6 | 24h | 1,440 |
| 145 | 1.4.6.2.2.6 | Integrate payment architecture into buyers dashboard | 4d | 2025-03-04 | 2025-03-10 | 144 | 327d | 0d | Solutions Arch 2 | 32h |  |
| 146 | 1.4.6.2.2.7 | Implement Compliance and Security Architecture for handling buyer's data | 4d | 2025-03-10 | 2025-03-14 | 145 | 327d | 0d | Arch Eng 1 | 32h | 1,920 |
| 147 | 1.4.6.2.2.8 | Review Buyer Payment Architecture and Implement changes | 2d | 2025-03-14 | 2025-03-18 | 146 | 327d | 0d | Arch Eng 6; Arch Eng 7 | 32h | 1,920 |
| 148 | 1.4.6.2.2.9 | Get customer sign-off for buyer architecture | 0.5d | 2025-03-18 | 2025-03-18 | 147 | 327d | 0d | Arch Lead 2 | 4h | 360 |
| 149 | 1.4.7 | **Architecture Review** | 4d | 2025-03-03 | 2025-03-06 |  | 226d | 0d |  | 176h | 6,640 |
| 150 | 1.4.7.1 | Evaluate Architectural Design | 4d | 2025-03-03 | 2025-03-06 |  | 234d | 0d | Arch Eng 2; Arch Lead 1 | 64h | 1,920 |
| 151 | 1.4.7.2 | Analyze Preformance and Scalability | 2d | 2025-03-03 | 2025-03-04 |  | 332d | 0d | Arch Eng 5; Arch Lead 2 | 32h | 2,400 |
| 152 | 1.4.7.3 | Review Architecture Models | 2d | 2025-03-03 | 2025-03-04 |  | 332d | 0d | Arch Lead 1 | 16h |  |
| 153 | 1.4.7.4 | Review Data Architecture | 2d | 2025-03-03 | 2025-03-04 |  | 334d | 0d | Arch Eng 5 | 16h | 960 |
| 154 | 1.4.7.5 | Finalize Architecture and Assess Possible Improvements | 2d | 2025-03-03 | 2025-03-04 |  | 337d | 0d | Arch Lead 1 | 16h |  |
| 155 | 1.4.7.6 | Review Architecture with Development Lead | 2d | 2025-03-03 | 2025-03-04 |  | 226d | 0d | Arch Lead 1; Deploy Lead | 32h | 1,360 |
| 156 | 1.5 | **Coding[Kailong Duan]** | 332d | 2025-03-03 | 2026-06-08 |  | 7d | 0d |  | 5152h |  |
| 157 | 1.5.1 | **Front-end** | 195d | 2025-03-03 | 2025-11-27 |  | 124d | 0d |  | 1064h |  |
| 158 | 1.5.1.1 | **UI design** | 8d | 2025-03-03 | 2025-03-12 |  | 224d | 0d |  | 224h |  |
| 159 | 1.5.1.1.1 | Rating& Reviews UI | 3d | 2025-03-03 | 2025-03-05 |  | 299d | 0d | front-end-dev1 | 24h |  |
| 160 | 1.5.1.1.2 | User Authentication UI | 5d | 2025-03-03 | 2025-03-07 |  | 309d | 0d | front-end-dev2 | 40h |  |
| 161 | 1.5.1.1.3 | CRUD auction Medical UI | 5d | 2025-03-03 | 2025-03-07 |  | 309d | 0d | front-end-dev2 | 40h |  |
| 162 | 1.5.1.1.4 | User Profiles UI | 5d | 2025-03-03 | 2025-03-07 |  | 309d | 0d | front-end-dev3 | 40h |  |
| 163 | 1.5.1.1.5 | Admin Dashboard UI | 5d | 2025-03-06 | 2025-03-12 | 159 | 299d | 0d | front-end-dev3 | 40h |  |
| 164 | 1.5.1.1.6 | User feedback UI | 5d | 2025-03-03 | 2025-03-07 |  | 224d | 0d | front-end-dev4 | 40h |  |

| ID | WBS | Task | Duration | Start | Finish | Predecessors | Total slack | Free slack | Constraint | Resources | Work |
| --- | --- | --- | --- | --- | --- | --- | --- | --- | --- | --- | --- |
| 165 | 1.5.1.2 | **development** | 193d | 2025-03-05 | 2025-11-27 | 155 | 124d | 0d |  |  | 840h |
| 166 | 1.5.1.2.1 | **User Profiles** | 7d | 2025-03-05 | 2025-03-13 |  | 224d | 0d |  |  | 56h |
| 167 | 1.5.1.2.1.1 | User Login, Register | 3d | 2025-03-05 | 2025-03-07 |  | 228d | 0d |  | front-end-dev1 | 24h |
| 168 | 1.5.1.2.1.2 | Review / Verification | 4d | 2025-03-10 | 2025-03-13 | 164 | 224d | 0d |  | front-end-dev1 | 32h |
| 169 | 1.5.1.2.2 | **Medical Supplies Auction Settings** | 12d | 2025-03-05 | 2025-03-20 |  | 224d | 0d |  |  | 200h |
| 170 | 1.5.1.2.2.1 | Medical Function List | 5d | 2025-03-05 | 2025-03-11 |  | 226d | 0d |  | front-end-dev2 | 40h |
| 171 | 1.5.1.2.2.2 | Image Upload | 5d | 2025-03-10 | 2025-03-14 | 167 | 228d | 0d |  | front-end-dev2 | 40h |
| 172 | 1.5.1.2.2.3 | Medical Price Settings | 5d | 2025-03-14 | 2025-03-20 | 168 | 224d | 0d |  | front-end-dev2 | 40h |
| 173 | 1.5.1.2.2.4 | Auction Time Settings | 5d | 2025-03-05 | 2025-03-11 |  | 231d | 0d |  | front-end-dev2 | 40h |
| 174 | 1.5.1.2.2.5 | Medical Supplies Detailed Description | 5d | 2025-03-12 | 2025-03-18 | 170 | 226d | 0d |  | front-end-dev2 | 40h |
| 175 | 1.5.1.2.3 | **Auction User Feedback** | 10d | 2025-10-29 | 2025-11-11 | 82 | 124d | 0d |  |  | 200h |
| 176 | 1.5.1.2.3.1 | Rating | 5d | 2025-10-29 | 2025-11-04 |  | 124d | 0d |  | front-end-dev4 | 40h |
| 177 | 1.5.1.2.3.2 | Customer Support | 5d | 2025-10-29 | 2025-11-04 | 173 | 141d | 0d |  | front-end-dev4 | 40h |
| 178 | 1.5.1.2.3.3 | Complaint Resolution | 5d | 2025-10-29 | 2025-11-04 | 174 | 141d | 0d |  | front-end-dev4 | 40h |
| 179 | 1.5.1.2.3.4 | Dispute Resolution | 5d | 2025-10-29 | 2025-11-04 |  | 129d | 0d |  | front-end-dev4 | 40h |
| 180 | 1.5.1.2.3.5 | User comment | 5d | 2025-11-05 | 2025-11-11 | 176 | 124d | 0d |  | front-end-dev4 | 40h |
| 181 | 1.5.1.2.4 | **Admin Dashboard** | 187d | 2025-03-13 | 2025-11-27 | 163 | 124d | 0d |  |  | 384h |
| 182 | 1.5.1.2.4.1 | User Account Management | 12d | 2025-03-13 | 2025-03-28 |  | 299d | 0d |  | front-end-dev3 | 96h |
| 183 | 1.5.1.2.4.2 | Medical Supplies Approval | 12d | 2025-11-05 | 2025-11-20 | 179 | 129d | 0d |  | front-end-dev3 | 96h |
| 184 | 1.5.1.2.4.3 | Generate Medical Supplies Quality | 12d | 2025-11-12 | 2025-11-27 | 180 | 124d | 0d |  | front-end-dev3 | 96h |
| 185 | 1.5.1.2.4.4 | Transaction Approval | 12d | 2025-03-13 | 2025-03-28 |  | 299d | 0d |  | front-end-dev3 | 96h |
| 186 | 1.5.2 | **Back-end** | 252d | 2025-06-20 | 2026-06-08 |  | 7d | 0d |  |  | 4088h |
| 187 | 1.5.2.1 | **Database Design​** | 44d | 2025-06-20 | 2025-08-20 |  | 215d | 0d |  |  | 528h |
| 188 | 1.5.2.1.1 | Medical Supplies, schema | 4d | 2025-06-20 | 2025-06-25 |  | 255d | 0d | finish no earlier than 2025-06-25 | back-end-dev1 | 32h |
| 189 | 1.5.2.1.2 | Rating& Reviews, schema | 4d | 2025-06-26 | 2025-07-01 |  | 251d | 0d | finish no earlier than 2025-07-01 | back-end-dev1 | 32h |
| 190 | 1.5.2.1.3 | User, Medical Supplies schema | 4d | 2025-06-20 | 2025-06-25 |  | 255d | 0d | finish no earlier than 2025-06-25 | back-end-dev2 | 32h |
| 191 | 1.5.2.1.4 | Develop CRUD operations​ | 40d | 2025-06-26 | 2025-08-20 |  | 215d | 0d | finish no earlier than 2025-08-20 | back-end-dev2 | 320h |
| 192 | 1.5.2.1.5 | Database Ready | 14d | 2025-06-20 | 2025-07-09 |  | 245d | 0d | finish no earlier than 2025-07-09 | back-end-dev3 | 112h |

| ID | WBS | Task | Duration | Start | Finish | Predecessors | Total slack | Free slack | Constraint | Resources | Work |
| --- | --- | --- | --- | --- | --- | --- | --- | --- | --- | --- | --- |
| 193 | 1.5.2.2 | **Real-Time Bidding System** | 62d | 2025-08-21 | 2025-11-14 |  | 153d | 0d |  |  | 1760h |
| 194 | 1.5.2.2.1 | Auction medical management | 15d | 2025-08-21 | 2025-09-10 |  | 200d | 0d | finish no earlier than 2025-09-10 | back-end-dev3; back-end-dev4 | 240h |
| 195 | 1.5.2.2.2 | Auction Status Tracking | 12d | 2025-09-11 | 2025-09-26 |  | 188d | 0d | finish no earlier than 2025-09-26 | back-end-dev3; back-end-dev4 | 192h |
| 196 | 1.5.2.2.3 | Real-Time Bidding Data | 14d | 2025-09-29 | 2025-10-16 |  | 174d | 0d | finish no earlier than 2025-10-16 | back-end-dev3; back-end-dev4 | 224h |
| 197 | 1.5.2.2.4 | Automatic Price Update | 15d | 2025-10-17 | 2025-11-06 |  | 121d | 0d | finish no earlier than 2025-11-06 | back-end-dev3; back-end-dev4 | 240h |
| 198 | 1.5.2.2.5 | email notification | 6d | 2025-11-07 | 2025-11-14 |  | 153d | 0d | finish no earlier than 2025-11-14 | back-end-dev3; back-end-dev4 | 96h |
| 199 | 1.5.2.2.6 | Historical Bidding Records | 15d | 2025-08-21 | 2025-09-10 |  | 200d | 0d | finish no earlier than 2025-09-10 | back-end-dev1; back-end-dev2 | 240h |
| 200 | 1.5.2.2.7 | Anti-Fraud Measures | 16d | 2025-09-11 | 2025-10-02 |  | 184d | 0d | finish no earlier than 2025-10-02 | back-end-dev1; back-end-dev2 | 256h |
| 201 | 1.5.2.2.8 | Proxy Bidding | 17d | 2025-10-03 | 2025-10-27 |  | 167d | 0d | finish no earlier than 2025-10-27 | back-end-dev1; back-end-dev2 | 272h |
| 202 | 1.5.2.3 | **Payment** | 25d | 2025-11-17 | 2025-12-19 |  | 128d | 0d |  |  | 200h |
| 203 | 1.5.2.3.1 | PayPal support | 5d | 2025-11-17 | 2025-11-21 |  | 148d | 0d | finish no earlier than 2025-11-21 | back-end-dev2 | 40h |
| 204 | 1.5.2.3.2 | Payment Gateway Integration | 5d | 2025-11-24 | 2025-11-28 | 151 | 143d | 0d | finish no earlier than 2025-11-28 | back-end-dev2 | 40h |
| 205 | 1.5.2.3.3 | Payment Confirmation | 5d | 2025-12-01 | 2025-12-05 | 152 | 138d | 0d | finish no earlier than 2025-12-05 | back-end-dev2 | 40h |
| 206 | 1.5.2.3.4 | Payment History | 3d | 2025-12-08 | 2025-12-10 | 153 | 135d | 0d | finish no earlier than 2025-12-10 | back-end-dev2 | 24h |
| 207 | 1.5.2.3.5 | Payment Status Tracking | 7d | 2025-12-11 | 2025-12-19 |  | 128d | 0d | finish no earlier than 2025-12-19 | back-end-dev2 | 56h |
| 208 | 1.5.2.4 | **AI-based Bidding Algorithms** | 146d | 2025-11-17 | 2026-06-08 |  | 7d | 0d |  |  | 1168h |
| 209 | 1.5.2.4.1 | Model selection | 4d | 2025-11-17 | 2025-11-20 |  | 149d | 0d | finish no earlier than 2025-11-20 | back-end-dev5 | 32h |
| 210 | 1.5.2.4.2 | Data collection | 30d | 2025-11-21 | 2026-01-01 | 155 | 119d | 0d | finish no earlier than 2026-01-01 | back-end-dev5 | 240h |
| 211 | 1.5.2.4.3 | Data preprocessing | 12d | 2026-01-02 | 2026-01-19 |  | 107d | 0d | finish no earlier than 2026-01-19 | back-end-dev5 | 96h |
| 212 | 1.5.2.4.4 | Reinforcement learning | 20d | 2026-01-20 | 2026-02-16 | 157 | 87d | 0d | finish no earlier than 2026-02-16 | back-end-dev5 | 160h |
| 213 | 1.5.2.4.5 | Objective function | 25d | 2026-02-17 | 2026-03-23 | 158 | 62d | 0d | finish no earlier than 2026-03-23 | back-end-dev5 | 200h |
| 214 | 1.5.2.4.6 | User characteristics | 21d | 2026-03-24 | 2026-04-21 | 159 | 41d | 0d | finish no earlier than 2026-04-21 | back-end-dev5 | 168h |
| 215 | 1.5.2.4.7 | Predict user behavior | 12d | 2026-04-22 | 2026-05-07 | 160 | 29d | 0d | finish no earlier than 2026-05-07 | back-end-dev5 | 96h |
| 216 | 1.5.2.4.8 | Optimize the bidding strategy | 20d | 2026-05-08 | 2026-06-04 | 161 | 9d | 0d | finish no earlier than 2026-06-04 | back-end-dev5 | 160h |
| 217 | 1.5.2.4.9 | Model evaluation | 2d | 2026-06-05 | 2026-06-08 | 162 | 7d | 0d | finish no earlier than 2026-06-08 | back-end-dev5 | 16h |

| ID | WBS | Task | Duration | Start | Finish | Predecessors | Total slack | Free slack | Constraint | Resources | Work | Cost |
| --- | --- | --- | --- | --- | --- | --- | --- | --- | --- | --- | --- | --- |
| 218 | 1.5.2.5 | **Security Measures** | 32d | 2025-12-22 | 2026-02-03 | 150 | 27d | 0d |  |  | 432h |  |
| 219 | 1.5.2.5.1 | Anti-Cheating System | 12d | 2025-12-22 | 2026-01-06 |  | 116d | 0d | finish no earlier than 2026-01-06 | back-end-dev3 | 96h |  |
| 220 | 1.5.2.5.2 | Rate Limiting | 5d | 2026-01-07 | 2026-01-13 | 165 | 111d | 0d | finish no earlier than 2026-01-13 | back-end-dev3 | 40h |  |
| 221 | 1.5.2.5.3 | Blacklist and User Restrictions | 5d | 2026-01-14 | 2026-01-20 | 166 | 106d | 0d | finish no earlier than 2026-01-20 | back-end-dev3 | 40h |  |
| 222 | 1.5.2.5.4 | Behavioral Analysis | 5d | 2025-12-22 | 2025-12-26 |  | 123d | 0d | finish no earlier than 2025-12-26 | back-end-dev4 | 40h |  |
| 223 | 1.5.2.5.5 | Manual Review System | 5d | 2026-01-21 | 2026-01-27 | 167 | 101d | 0d | finish no earlier than 2026-01-27 | back-end-dev4 | 40h |  |
| 224 | 1.5.2.5.6 | Bot Detection | 5d | 2025-12-29 | 2026-01-02 | 168 | 118d | 0d | finish no earlier than 2026-01-02 | back-end-dev4 | 40h |  |
| 225 | 1.5.2.5.7 | IP and Device Tracking | 5d | 2026-01-28 | 2026-02-03 | 169 | 0d |  | finish no earlier than 2026-02-03 | back-end-dev4 | 40h |  |
| 226 | 1.5.2.5.8 | Add HTTPS Encryption for Payment APIs | 12d | 2026-01-05 | 2026-01-20 | 170 | 85d | 0d | finish no earlier than 2026-01-20 | back-end-dev4 | 96h |  |
| 227 | 1.6 | **Tesing[Kailong Duan]** | 339d | 2025-03-03 | 2026-06-17 |  | 0d |  |  |  | 5600h | 204,800 |
| 228 | 1.6.1 | **Testing Plan** | 236d | 2025-03-03 | 2026-01-23 |  | 103d | 0d |  |  | 120h |  |
| 229 | 1.6.1.1 | Determine Test Objects | 4d | 2025-03-03 | 2025-03-06 |  | 335d | 0d |  | Tester1 | 32h |  |
| 230 | 1.6.1.2 | Define Test Scope | 3d | 2026-01-21 | 2026-01-23 | 226 | 85d | 0d |  | Tester1 | 24h |  |
| 231 | 1.6.1.3 | Resource Preparation | 3d | 2025-03-03 | 2025-03-05 |  | 257d | 0d |  | Tester1 | 24h |  |
| 232 | 1.6.1.4 | Identification Risk and mitigation | 5d | 2025-03-03 | 2025-03-07 |  | 329d | 0d |  | Tester1 | 40h |  |
| 233 | 1.6.2 | **UAT testing** | 47d | 2026-02-04 | 2026-04-09 | 225 | 0d |  |  |  | 880h |  |
| 234 | 1.6.2.1 | **front-end tesing** | 5d | 2026-02-04 | 2026-02-10 |  | 0d |  |  |  | 160h |  |
| 235 | 1.6.2.1.1 | Auction User Authentication | 5d | 2026-02-04 | 2026-02-10 |  | 91d | 0d |  | Tester2 | 40h |  |
| 236 | 1.6.2.1.2 | Auction registration, login | 5d | 2026-02-04 | 2026-02-10 | 232 | 91d | 0d |  | Tester2 | 40h |  |
| 237 | 1.6.2.1.3 | Auction payment testing | 5d | 2026-02-04 | 2026-02-10 |  | 0d |  |  | Tester2 | 40h |  |
| 238 | 1.6.2.1.4 | test items webpage | 5d | 2026-02-04 | 2026-02-10 |  | 79d | 0d |  | Tester2 | 40h |  |
| 239 | 1.6.2.2 | **back-end tesing** | 47d | 2026-02-04 | 2026-04-09 | 225 | 5d | 0d |  |  | 720h |  |
| 240 | 1.6.2.2.1 | User Management Service | 12d | 2026-02-04 | 2026-02-19 |  | 65d | 0d |  | Tester3 | 96h |  |
| 241 | 1.6.2.2.2 | Medical Supplies Product Review and Verification Service. | 12d | 2026-02-11 | 2026-02-26 | 237 | 0d |  |  | Tester3 | 96h |  |
| 242 | 1.6.2.2.3 | Real-Time Bidding System Service. | 12d | 2026-02-11 | 2026-02-26 | 238 | 79d | 0d |  | Tester3 | 96h |  |
| 243 | 1.6.2.2.4 | Medical Supplies Online Service. | 12d | 2026-02-04 | 2026-02-19 |  | 28d | 0d |  | Tester3 | 96h |  |
| 244 | 1.6.2.2.5 | Feedback and Rating Service. | 12d | 2026-02-20 | 2026-03-09 | 240 | 65d | 0d |  | Tester3 | 96h |  |
| 245 | 1.6.2.2.6 | API Integration | 30d | 2026-02-27 | 2026-04-09 | 231, 241 | 0d |  |  | Tester3 | 240h |  |

| ID | WBS | Task | Duration | Start | Finish | Predecessors | Total slack | Free slack | Resources | Work |
| --- | --- | --- | --- | --- | --- | --- | --- | --- | --- | --- |
| 246 | 1.6.3 | **Other Testing.** | 54d | 2026-02-04 | 2026-04-20 | 225 | 42d | 0d |  | 280h |
| 247 | 1.6.3.1 | Security Testing. | 7d | 2026-02-04 | 2026-02-12 |  | 77d | 0d | Tester4 | 56h |
| 248 | 1.6.3.2 | Performance Testing. | 7d | 2026-03-10 | 2026-03-18 | 244 | 65d | 0d | Tester4 | 56h |
| 249 | 1.6.3.3 | Test reporting and defact tracking | 7d | 2026-04-10 | 2026-04-20 | 245 | 0d |  | Tester4 | 56h |
| 250 | 1.6.3.4 | Usability Testing. | 7d | 2026-02-04 | 2026-02-12 |  | 89d | 0d | Tester4 | 56h |
| 251 | 1.6.3.5 | Execute Test Cases: | 7d | 2026-02-13 | 2026-02-23 | 247 | 77d | 0d | Tester4 | 56h |
| 252 | 1.6.4 | **Test execution** | 40d | 2026-01-26 | 2026-03-20 |  | 47d | 0d |  | 688h |
| 253 | 1.6.4.1 | **UAT testing** | 26d | 2026-01-26 | 2026-03-02 | 230 | 77d | 0d |  | 256h |
| 254 | 1.6.4.1.1 | Prepare UAT evnironment | 5d | 2026-01-26 | 2026-01-30 |  | 98d | 0d | Tester1; Tester2 | 80h |
| 255 | 1.6.4.1.2 | Define auction testingscenarios | 5d | 2026-02-24 | 2026-03-02 | 251 | 77d | 0d | Tester1; Tester2 | 80h |
| 256 | 1.6.4.1.3 | Feedback from UAT team | 4d | 2026-01-26 | 2026-01-29 |  | 85d | 0d | Tester1; Tester2 | 64h |
| 257 | 1.6.4.1.4 | Sign off and documents | 2d | 2026-01-26 | 2026-01-27 |  | 89d | 0d | Tester1; Tester2 | 32h |
| 258 | 1.6.4.2 | **Integration Testing** | 21d | 2026-02-20 | 2026-03-20 | 225, 243 | 28d | 0d |  | 432h |
| 259 | 1.6.4.2.1 | Prepare testing evnironment | 5d | 2026-02-20 | 2026-02-26 |  | 47d | 0d | Tester4 | 40h |
| 260 | 1.6.4.2.2 | Add testing Cases | 5d | 2026-02-20 | 2026-02-26 | 256 | 70d | 0d | Tester4 | 40h |
| 261 | 1.6.4.2.3 | Front-end page Testing | 12d | 2026-02-20 | 2026-03-09 | 257 | 72d | 0d | Tester4 | 96h |
| 262 | 1.6.4.2.4 | Back-end API Testing | 14d | 2026-02-20 | 2026-03-11 |  | 28d | 0d | Tester4 | 112h |
| 263 | 1.6.4.2.5 | Performance Testing | 16d | 2026-02-27 | 2026-03-20 | 259 | 47d | 0d | Tester4 | 128h |
| 264 | 1.6.4.2.6 | Analyze Results: | 2d | 2026-02-27 | 2026-03-02 | 260 | 70d | 0d | Tester4 | 16h |
| 265 | 1.6.5 | **AI-based Bidding Algorithms Testing** | 292d | 2025-03-03 | 2026-04-13 |  | 47d | 0d |  | 472h |
| 266 | 1.6.5.1 | Define experimental and control users | 5d | 2025-03-03 | 2025-03-07 |  | 298d | 0d | Tester5 | 40h |
| 267 | 1.6.5.2 | Determine the test period | 4d | 2026-03-23 | 2026-03-26 | 263 | 47d | 0d | Tester5 | 32h |
| 268 | 1.6.5.3 | Monitoring indicators | 4d | 2026-03-03 | 2026-03-06 | 264 | 70d | 0d | Tester5 | 32h |
| 269 | 1.6.5.4 | Deploying new algorithms | 2d | 2025-03-03 | 2025-03-04 |  | 332d | 0d | Tester5 | 16h |
| 270 | 1.6.5.5 | New algorithm for data analysis | 12d | 2025-03-10 | 2025-03-25 | 266 | 298d | 0d | Tester5 | 96h |
| 271 | 1.6.5.6 | Algorithm optimization | 12d | 2026-03-27 | 2026-04-13 | 267 | 47d | 0d | Tester5 | 96h |
| 272 | 1.6.5.7 | Algorithm update | 3d | 2026-03-09 | 2026-03-11 | 268 | 70d | 0d | Tester5 | 24h |
| 273 | 1.6.5.8 | Continuous monitoring | 5d | 2025-03-05 | 2025-03-11 | 269 | 332d | 0d | Tester5 | 40h |
| 274 | 1.6.5.9 | Iterative optimization | 12d | 2025-03-26 | 2025-04-10 | 270 | 298d | 0d | Tester5 | 96h |

| ID | WBS | Task | Duration | Start | Finish | Predecessors | Total slack | Free slack | Resources | Work | Cost |
| --- | --- | --- | --- | --- | --- | --- | --- | --- | --- | --- | --- |
| 275 | 1.6.6 | **Test reporting and defect tracking** | 42d | 2026-04-21 | 2026-06-17 | 243, 262, 249 | 0d |  |  | 3160h | 204,800 |
| 276 | 1.6.6.1 | **Bug logging** | 12d | 2026-04-21 | 2026-05-06 |  | 4d | 0d |  | 704h |  |
| 277 | 1.6.6.1.1 | Classify Bug Logs | 5d | 2026-04-21 | 2026-04-27 |  | 37d | 0d | Tester1; Tester2 | 80h |  |
| 278 | 1.6.6.1.2 | Search for Bug Logs | 12d | 2026-04-21 | 2026-05-06 | 274 | 30d | 0d | Tester1; Tester2 | 192h |  |
| 279 | 1.6.6.1.3 | Organize Bug Report | 12d | 2026-04-21 | 2026-05-06 |  | 30d | 0d | Tester1; Tester2 | 192h |  |
| 280 | 1.6.6.1.4 | Send to Developers for Handling | 3d | 2026-04-21 | 2026-04-23 |  | 34d | 0d | Tester1; Tester2 | 48h |  |
| 281 | 1.6.6.1.5 | Add Bug Report Progress Tracking | 12d | 2026-04-21 | 2026-05-06 | 197 | 4d | 0d | Tester1; Tester2 | 192h |  |
| 282 | 1.6.6.2 | **Bug tracking** | 42d | 2026-04-21 | 2026-06-17 |  | 0d |  |  | 2456h | 204,800 |
| 283 | 1.6.6.2.1 | Add Bug Report Progress Tracking | 12d | 2026-04-21 | 2026-05-06 |  | 30d | 0d | Tester3; Tester4 | 192h |  |
| 284 | 1.6.6.2.2 | Display Report After Handling, Further Testing | 5d | 2026-04-24 | 2026-04-30 | 280 | 34d | 0d | Tester3; Tester4 | 80h |  |
| 285 | 1.6.6.2.3 | Bug Issue Resolution Completed | 2d | 2026-05-07 | 2026-05-08 | 281 | 4d | 0d | Tester3; Tester4 | 32h |  |
| 286 | 1.6.6.2.4 | **Deployment[Kailong Duan]** | 42d | 2026-04-21 | 2026-06-17 |  | 0d |  |  | 2152h | 204,800 |
| 287 | 1.6.6.2.4.1 | **Deployment plan** | 31d | 2026-04-21 | 2026-06-02 |  | 2d | 0d |  | 248h | 12,400 |
| 288 | 1.6.6.2.4.1.1 | Add deployment target/ requirement | 5d | 2026-04-21 | 2026-04-27 |  | 5d | 0d | Deploy-eng-4 | 40h |  |
| 289 | 1.6.6.2.4.1.2 | Connect to the code repository | 5d | 2026-05-11 | 2026-05-15 | 285 | 4d | 0d | Deploy-eng-4 | 40h |  |
| 290 | 1.6.6.2.4.1.3 | Pull the latest code changes | 3d | 2026-04-21 | 2026-04-23 |  | 12d | 0d | Deploy-eng-4 | 24h |  |
| 291 | 1.6.6.2.4.1.4 | Deploy the application | 3d | 2026-04-21 | 2026-04-23 |  | 2d | 0d | Deploy-eng-4 | 24h |  |
| 292 | 1.6.6.2.4.1.5 | Build the application | 3d | 2026-04-28 | 2026-04-30 | 288 | 5d | 0d | Deploy-eng-4 | 24h |  |
| 293 | 1.6.6.2.4.1.6 | Verify functionality | 12d | 2026-05-18 | 2026-06-02 | 289 | 4d | 0d | Deploy-eng-4 | 96h |  |
| 294 | 1.6.6.2.4.2 | **Infrastructure Setup** | 38d | 2026-04-21 | 2026-06-11 |  | 0d |  |  | 464h | 23,200 |
| 295 | 1.6.6.2.4.2.1 | Purchase hardware and software | 3d | 2026-04-21 | 2026-04-23 |  | 27d | 0d | Deploy-eng-1; Deploy-eng-2 | 48h |  |
| 296 | 1.6.6.2.4.2.2 | Hardware installment | 7d | 2026-05-01 | 2026-05-11 | 292 | 5d | 0d | Deploy-eng-1; Deploy-eng-2 | 112h |  |
| 297 | 1.6.6.2.4.2.3 | CPU, GPU, Memory,Server, Network,Ram | 7d | 2026-06-03 | 2026-06-11 | 293 | 4d | 0d | Deploy-eng-1; Deploy-eng-2 | 112h |  |
| 298 | 1.6.6.2.4.2.4 | Software installment | 5d | 2026-04-21 | 2026-04-27 |  | 0d |  | Deploy-eng-2; Deploy-eng-1 | 80h |  |
| 299 | 1.6.6.2.4.2.5 | jenkins, docker, linux, database | 7d | 2026-04-24 | 2026-05-04 | 295 | 27d | 0d | Deploy-eng-2; Deploy-eng-1 | 112h |  |

| ID | WBS | Task | Duration | Start | Finish | Predecessors | Total slack | Free slack | Resources | Work | Cost |
| --- | --- | --- | --- | --- | --- | --- | --- | --- | --- | --- | --- |
| 300 | 1.6.6.2.4.3 | **Configuration** | 22d | 2026-04-24 | 2026-05-25 | 291 | 2d | 0d |  |  | 20,000 |
| 301 | 1.6.6.2.4.3.1 | Build dev environment | 5d | 2026-05-12 | 2026-05-18 | 296 | 5d | 0d |  |  |  |
| 302 | 1.6.6.2.4.3.2 | Build testing environment | 5d | 2026-04-28 | 2026-05-04 | 298 | 0d |  |  |  |  |
| 303 | 1.6.6.2.4.3.3 | Build produce environment | 5d | 2026-05-05 | 2026-05-11 | 299 | 27d | 0d |  |  |  |
| 304 | 1.6.6.2.4.3.4 | configure the network | 5d | 2026-04-24 | 2026-04-30 |  | 8d | 0d |  |  |  |
| 305 | 1.6.6.2.4.3.5 | configure firewall and security | 5d | 2026-05-19 | 2026-05-25 | 301 | 5d | 0d |  |  |  |
| 306 | 1.6.6.2.4.4 | **AI-based Bidding Algorithm Deploy** | 37d | 2026-04-21 | 2026-06-10 |  | 5d | 0d |  | 480h | 24,000 |
| 307 | 1.6.6.2.4.4.1 | Model Export | 5d | 2026-04-24 | 2026-04-30 | 290 | 12d | 0d | Deploy-eng-4 | 40h |  |
| 308 | 1.6.6.2.4.4.2 | Add data monitoring | 14d | 2026-05-01 | 2026-05-20 | 304 | 8d | 0d | Deploy-eng-4 | 112h |  |
| 309 | 1.6.6.2.4.4.3 | Inference Service | 12d | 2026-05-26 | 2026-06-10 | 305 | 5d | 0d | Deploy-eng-4 | 96h |  |
| 310 | 1.6.6.2.4.4.4 | Continuous Updates (CI/CD) | 12d | 2026-04-21 | 2026-05-06 |  | 30d | 0d | Deploy-eng-4 | 96h |  |
| 311 | 1.6.6.2.4.4.5 | Build version vontrol | 5d | 2026-05-01 | 2026-05-07 | 307 | 12d | 0d | Deploy-eng-4 | 40h |  |
| 312 | 1.6.6.2.4.4.6 | Iterative update | 12d | 2026-05-21 | 2026-06-05 | 308 | 8d | 0d | Deploy-eng-4 | 96h |  |
| 313 | 1.6.6.2.4.5 | **Deploy Solution** | 42d | 2026-04-21 | 2026-06-17 |  | 0d |  |  | 960h | 125,200 |
| 314 | 1.6.6.2.4.5.1 | Final Deployment Verification | 3d | 2026-05-05 | 2026-05-07 | 302 | 0d |  |  |  |  |
| 315 | 1.6.6.2.4.5.2 | **Product Released** | 27d | 2026-04-21 | 2026-05-27 |  | 12d | 0d |  |  | 9,600 |
| 316 | 1.6.6.2.4.5.2.1 | Validate Feedback collection | 14d | 2026-05-08 | 2026-05-27 | 311 | 12d | 0d |  |  |  |
| 317 | 1.6.6.2.4.5.2.2 | Environment Health Check | 3d | 2026-04-21 | 2026-04-23 |  | 24d | 0d |  |  |  |
| 318 | 1.6.6.2.4.5.2.3 | Product Released | 7d | 2026-05-08 | 2026-05-18 | 314 | 0d |  |  |  |  |
| 319 | 1.6.6.2.4.5.3 | **Release Process** | 27d | 2026-04-24 | 2026-06-01 |  | 12d | 0d |  |  | 4,400 |
| 320 | 1.6.6.2.4.5.3.1 | Define Release Methodology: | 3d | 2026-05-28 | 2026-06-01 | 315 | 12d | 0d |  |  |  |
| 321 | 1.6.6.2.4.5.3.2 | Rollout Plan | 3d | 2026-04-24 | 2026-04-28 | 317 | 24d | 0d |  |  |  |
| 322 | 1.6.6.2.4.5.3.3 | Test in Production | 5d | 2026-05-19 | 2026-05-25 | 318 | 0d |  |  |  |  |
| 323 | 1.6.6.2.4.5.4 | **Release Management** | 24d | 2026-04-29 | 2026-06-01 |  | 7d | 0d |  | 352h | 17,600 |
| 324 | 1.6.6.2.4.5.4.1 | Version Control& Tracking: | 12d | 2026-05-12 | 2026-05-27 | 296 | 10d | 0d | Deploy-eng-1; Deploy-eng-2 | 192h |  |
| 325 | 1.6.6.2.4.5.4.2 | Build CI/CD Pipeline | 5d | 2026-04-29 | 2026-05-05 | 321 | 24d | 0d | Deploy-eng-1; Deploy-eng-2 | 80h |  |
| 326 | 1.6.6.2.4.5.4.3 | Automated Rollback | 5d | 2026-05-26 | 2026-06-01 | 322 | 0d |  | Deploy-eng-1; Deploy-eng-2 | 80h |  |

| ID | WBS | Task | Duration | Start | Finish | Predecessors | Total slack | Free slack | Resources | Work | Cost |
| --- | --- | --- | --- | --- | --- | --- | --- | --- | --- | --- | --- |
| 327 | 1.6.6.2.4.5.5 | **Gather and Analysis** | 42d | 2026-04-21 | 2026-06-17 |  | 0d |  |  | 608h | 30,400 |
| 328 | 1.6.6.2.4.5.5.1 | Data Logging and Tracking: | 5d | 2026-06-02 | 2026-06-08 | 323 | 7d | 0d | Deploy-eng-1; Deploy-eng-2 | 80h |  |
| 329 | 1.6.6.2.4.5.5.2 | User Analytics | 7d | 2026-05-06 | 2026-05-14 | 325 | 24d | 0d | Deploy-eng-1; Deploy-eng-2 | 112h |  |
| 330 | 1.6.6.2.4.5.5.3 | Business Impact Analysis | 12d | 2026-06-02 | 2026-06-17 | 326 | 0d |  | Deploy-eng-1; Deploy-eng-2 | 192h |  |
| 331 | 1.6.6.2.4.5.5.4 | Continuous Improvement | 14d | 2026-04-21 | 2026-05-08 |  | 28d | 0d | Deploy-eng-1; Deploy-eng-2 | 224h |  |
